Schedule from MS Project, 2011-01-13 to 2012-01-02, A marks actual dates.

## Calendars

- Standard: Mon-Fri 08:00-12:00, 13:00-17:00; Sat-Sun off.

## Resources

| Resource |
| --- |
| not scheduled |
| Greg |
| Prasad |
| Dan |
| Vijay |
| Xiaoling |
| Prasad2 |
| Dan2 |
| Pra |

## Schedule

| ID | WBS | Task | Type | Duration | Start | Finish | Predecessors | Complete | Remaining | Total slack | Free slack | Constraint | Resources | Work | Actual work |
| --- | --- | --- | --- | --- | --- | --- | --- | --- | --- | --- | --- | --- | --- | --- | --- |
| 3 | 1 | **CSM bug fixes (code - no release specified)** |  | 6d | 2011-03-14 A | 2011-03-21 A |  | 100% |  |  |  |  |  | 48h | 48h |
| 4 | 1.1 | GF 29450 CSM – Users locked out due to invalid logins may be (effectively) locked out forever |  | 5d | 2011-03-14 A | 2011-03-18 A |  | 100% |  |  |  | start no earlier than 2011-03-14 | Vijay | 40h | 40h |
| 5 | 1.2 | GF 30372 CSM/UPT - Change UPT install.properties file to note properties that must be replaced |  | 1d | 2011-03-21 A | 2011-03-21 A |  | 100% |  |  |  | start no earlier than 2011-03-21 | Vijay | 8h | 8h |
| 8 | 2 | **SDK 4.2.2** |  | 29d? | 2011-03-15 A | 2011-04-22 |  | 61% | 11.28d? | 29d | 0d |  |  | 288h | 176h |
| 9 | 2.1 | GF 30729 Provide option to generate JUnit Tests for Logical Model Domain classes [already done] | milestone | 0d | 2011-03-15 A | 2011-03-15 A |  | 100% |  |  |  | start no earlier than 2011-03-15 |  |  |  |
| 10 | 2.2 | GF 30749 Third-Party Jars within the Code Generation Process |  | 5d | 2011-03-15 A | 2011-03-21 A |  | 100% |  |  |  | start no earlier than 2011-03-15 | Dan | 40h | 40h |
| 11 | 2.3 | GF 30753 Generation of the "not-null" Attribute with the "property" Element Node (not-null constraints) |  | 3d | 2011-03-30 A | 2011-04-01 A |  | 100% |  |  |  | start no earlier than 2011-03-30 | Vijay | 24h | 24h |
| 12 | 2.4 | GF 30748 Bi-directional self-associations |  | 5d | 2011-04-04 A | 2011-04-08 A |  | 100% |  |  |  | start no earlier than 2011-04-04 | Vijay | 40h | 40h |
| 13 | 2.5 | GF 30510 Support for interfaces |  | 9d | 2011-03-30 A | 2011-04-11 A |  | 100% |  |  |  | start no earlier than 2011-03-30 | Prasad | 72h | 72h |
| 14 | 2.6 | Dev testing and documentation |  | 4d | 2011-04-12 | 2011-04-15 | 9, 10, 11, 12, 13 |  |  | 29d | 0d |  | Prasad | 32h |  |
| 15 | 2.7 | QA |  | 5d | 2011-04-18 | 2011-04-22 | 14 |  |  | 29d |  |  | Xiaoling | 40h |  |
| 16 | 2.8 | Introduce extension for 4.2.2 (Community Project) |  | 5d? | 2011-04-18 | 2011-04-22 | 14 |  |  | 29d | 0d |  | Prasad | 40h |  |
| 17 | 2.9 | Optional QA for 30508, 30510, 30511, 30524 | milestone | 0d? | 2011-04-22 | 2011-04-22 | 16 |  |  | 29d |  |  | Xiaoling |  |  |
| 20 | 3 | **UPT Improvement Plan** |  | 32d? | 2011-03-14 A | 2011-04-26 |  | 20% | 25.6d? | 89d | 60d |  |  | 48h | 48h |
| 21 | 3.1 | Analysis of existing trackers |  | 6d | 2011-03-14 A | 2011-03-21 A |  | 100% |  |  |  | start no earlier than 2011-03-14 | Prasad | 48h | 48h |
| 22 | 3.2 | Requirements gathering with NBIA |  | 20d? | 2011-03-28 | 2011-04-22 |  |  |  | 89d | 0d | start no earlier than 2011-03-28 |  |  |  |
| 23 | 3.3 | Draft project plan development |  | 2d | 2011-04-21 | 2011-04-22 | 21, 22FF |  |  | 89d | 0d |  |  |  |  |
| 24 | 3.4 | Review plan with user representatives and amend |  | 1d? | 2011-04-25 | 2011-04-25 | 23 |  |  | 89d | 0d |  |  |  |  |
| 25 | 3.5 | Plan approval |  | 1d? | 2011-04-26 | 2011-04-26 | 24 |  |  | 89d |  |  |  |  |  |
| 28 | 4 | **Analysis** |  | 53d? | 2011-01-13 A | 2011-03-28 |  | 83% | 8.83d? | 200d |  |  |  | 40h | 40h |
| 29 | 4.1 | Eclipse/SDK comparison and gap analysis |  | 5d | 2011-03-22 A | 2011-03-28 A |  | 100% |  |  |  | start no earlier than 2011-03-22 | Prasad | 40h | 40h |
| 30 | 4.2 | User requirements/need for SDK (combined with Eclipse/SDK analysis) |  | 1d? | 2011-01-13 | 2011-01-13 |  |  |  | 252d |  |  |  |  |  |
| 33 | 5 | **SDK 4.1.3 - GF 27529 patch to 4.1.2 (for caBIO)** |  | 3d? | 2011-03-14 A | 2011-03-16 |  |  | 3d? | 208d |  |  |  | 24h |  |
| 34 | 5.1 | apply fix for GF 27529 to 4.1.2 [already done] | milestone | 0d | 2011-03-14 A | 2011-03-14 A |  | 100% |  |  |  | start no earlier than 2011-03-14 |  |  |  |
| 35 | 5.2 | QA [low priority] |  | 2d? | 2011-03-14 | 2011-03-15 | 34 |  |  | 208d | 0d | start no earlier than 2011-02-17 | not scheduled | 16h |  |
| 36 | 5.3 | Gforge post |  | 1d | 2011-03-16 | 2011-03-16 | 35 |  |  | 208d |  |  | not scheduled | 8h |  |

| ID | WBS | Task | Duration | Start | Finish | Predecessors | Total slack | Free slack | Constraint | Resources | Work |
| --- | --- | --- | --- | --- | --- | --- | --- | --- | --- | --- | --- |
| 39 | 6 | **Technology stack upgrade** | 62d | 2011-04-25 | 2011-07-19 | 8 | 29d | 0d |  |  | 416h |
| 40 | 6.1 | CSM/UPT/CGMM | 10d | 2011-04-25 | 2011-05-06 |  | 29d | 0d |  | Prasad | 80h |
| 41 | 6.2 | CLM/LLT | 5d | 2011-05-09 | 2011-05-13 | 40 | 29d | 0d |  | Prasad | 40h |
| 42 | 6.3 | XMI Handler | 2d | 2011-05-16 | 2011-05-17 | 41 | 29d | 0d |  | Prasad | 16h |
| 43 | 6.4 | ISO 21090 | 5d | 2011-05-18 | 2011-05-24 | 42 | 29d | 0d |  | Prasad | 40h |
| 44 | 6.5 | SDK | 15d | 2011-05-25 | 2011-06-14 | 43 | 29d | 0d |  | Prasad | 120h |
| 45 | 6.6 | Workbench | 5d | 2011-06-15 | 2011-06-21 | 44 | 29d | 0d |  | Prasad | 40h |
| 46 | 6.7 | QA lag (assumes ongoing QA) | 10d | 2011-06-22 | 2011-07-05 | 45 | 29d | 0d |  | Xiaoling | 80h |
| 47 | 6.8 | Release activities | 10d | 2011-07-06 | 2011-07-19 | 46 | 29d |  |  |  |  |
| 50 | 7 | **UPT enhancements** | 90d | 2011-07-20 | 2011-11-22 | 20, 39 | 29d |  |  |  |  |
| 51 | 7.1 | Undefined | 90d | 2011-07-20 | 2011-11-22 |  | 29d |  |  |  |  |
| 54 | 8 | **Other unplanned** | 1d? | 2011-01-13 | 2011-01-13 |  | 252d |  |  |  |  |
| 55 | 8.1 | 508 compliance review and plan | 1d? | 2011-01-13 | 2011-01-13 |  | 252d |  | start no earlier than 2011-01-13 |  |  |
| 56 | 8.2 | ECCF compliance review and plan | 1d? | 2011-01-13 | 2011-01-13 |  | 252d |  | start no earlier than 2011-01-13 |  |  |
| 57 | 8.3 | Effect of NCI CBIIT’s Enterprise Security Program on CSM | 1d? | 2011-01-13 | 2011-01-13 |  | 252d |  | start no earlier than 2011-01-13 |  |  |
| 58 | 8.4 | Effect of NCI CBIIT’s Enterprise Security Program on CLM | 1d? | 2011-01-13 | 2011-01-13 |  | 223d |  | start no earlier than 2011-01-13 |  |  |
| 61 | 9 | **Ongoing support** | 253d | 2011-01-13 | 2012-01-02 |  | 0d |  |  |  | 2530h |
| 62 | 9.1 | CLM, CSM/UPT, SDK, etc. | 253d | 2011-01-13 | 2012-01-02 |  | 0d |  | start no earlier than 2011-01-13 | Prasad2 | 2024h |
| 63 | 9.2 | SDK | 253d | 2011-01-13 | 2012-01-02 |  | 0d |  |  | Dan2 [25%] | 506h |
